# openSUSE 12.2

How a schedule from Planner changed from version to version. A marks actual dates.

## Version 1 (saved 2012-08-16)

Note of the change: start

| ID | WBS | Task | Start | Finish | Predecessors |
| --- | --- | --- | --- | --- | --- |
| 1 | 1 | **Pre-Gold Master development** | 2012-08-07 | 2012-08-14 |  |
| 2 |  | Expected new features document | 2012-08-07 | 2012-08-07 |  |
| 3 |  | create test plan | 2012-08-08 | 2012-08-08 | 2 |
| 4 | 1.3 | **Manuals** | 2012-08-07 | 2012-08-13 |  |
| 5 |  | document new features | 2012-08-07 | 2012-08-07 |  |
| 6 |  | detect obsolete sections in Manuals | 2012-08-07 | 2012-08-07 |  |
| 7 |  | update manuals | 2012-08-08 | 2012-08-08 | 6, 5 |
| 8 |  | documentation team finished | 2012-08-13 | 2012-08-13 | 14 |
| 9 | 1.4 | **Translations** | 2012-08-07 | 2012-08-10 |  |
| 10 |  | manuals | 2012-08-09 | 2012-08-09 | 7 |
| 11 |  | package descriptions | 2012-08-07 | 2012-08-07 |  |
| 12 |  | package strings | 2012-08-07 | 2012-08-07 |  |
| 13 |  | release notes | 2012-08-07 | 2012-08-07 |  |
| 14 |  | translation check finished | 2012-08-10 | 2012-08-10 | 11, 12, 10 |
| 15 | 1.5 | **Security** | 2012-08-07 | 2012-08-08 |  |
| 16 |  | review new setuid binaries | 2012-08-07 | 2012-08-07 |  |
| 17 |  | review new network services | 2012-08-07 | 2012-08-07 |  |
| 18 |  | review new dbus services | 2012-08-07 | 2012-08-07 |  |
| 19 |  | review new policykit policies | 2012-08-07 | 2012-08-07 |  |
| 20 |  | update Apparmor profiles | 2012-08-07 | 2012-08-07 |  |
| 21 |  | security check finished | 2012-08-08 | 2012-08-08 | 20, 19, 18, 17, 16 |
| 22 | 1.6 | **prepare stable branch** | 2012-08-07 | 2012-08-09 |  |
| 23 |  | branch new distro in OBS | 2012-08-07 | 2012-08-07 |  |
| 24 |  | bump release numbers in Factory | 2012-08-08 | 2012-08-08 | 23 |
| 25 |  | Remove "Beta" tags from packages and configs | 2012-08-08 | 2012-08-08 | 23 |
| 26 |  | set up Update project | 2012-08-08 | 2012-08-08 | 23 |
| 27 |  | notify maintenance & security about new branch | 2012-08-09 | 2012-08-09 | 26 |
| 28 | 1.7 | **Bug fixing** | 2012-08-07 | 2012-08-10 |  |
| 29 |  | fix bug | 2012-08-07 | 2012-08-07 |  |
| 30 |  | submit package | 2012-08-08 | 2012-08-08 | 29 |
| 31 |  | review package | 2012-08-09 | 2012-08-09 | 30 |
| 32 |  | check in to distribution | 2012-08-10 | 2012-08-10 | 31 |
| 33 |  | update most annoying bugs list | 2012-08-07 | 2012-08-07 |  |
| 34 |  | update rsync modules used by the mirrors | 2012-08-07 | 2012-08-07 |  |
| 35 |  | Go from Legal team | 2012-08-07 | 2012-08-07 |  |
| 36 |  | Go/Nogo for declaring RC? | 2012-08-14 | 2012-08-14 | 33, 32, 35, 8, 21, 9, 28, 25, 3, 34, 2 |
| 37 | 1.11 | **Artwork** | 2012-08-07 | 2012-08-09 |  |
| 38 |  | run competition for best artwork | 2012-08-07 | 2012-08-07 |  |
| 39 |  | Basic design | 2012-08-08 | 2012-08-08 | 38 |
| 40 |  | bootsplash | 2012-08-09 | 2012-08-09 | 39 |
| 41 |  | desktop splash screens | 2012-08-09 | 2012-08-09 | 39 |
| 42 |  | wallpapers | 2012-08-09 | 2012-08-09 | 39 |
| 43 |  | Poster | 2012-08-09 | 2012-08-09 | 39 |
| 44 |  | Sticker | 2012-08-09 | 2012-08-09 | 39 |
| 45 |  | Flyers | 2012-08-09 | 2012-08-09 | 39 |
| 46 |  | T-Shirts | 2012-08-09 | 2012-08-09 | 39 |
| 47 |  | download banner | 2012-08-09 | 2012-08-09 | 39 |
| 48 |  | Countdown | 2012-08-09 | 2012-08-09 | 39 |
| 49 |  | Promo DVD Sleeve | 2012-08-09 | 2012-08-09 | 39 |
| 50 |  | Presentation | 2012-08-09 | 2012-08-09 | 39, 2 |
| 51 |  | Screenshots | 2012-08-07 | 2012-08-07 |  |
| 52 | 2 | **Gold Master development** | 2012-08-16 | 2012-08-30 | 172 |
| 53 |  | Call for Release Parties | 2012-08-16 | 2012-08-16 | 172 |
| 54 |  | Update Release notes | 2012-08-21 | 2012-08-21 | 66 |
| 55 |  | Install Countdown link | 2012-08-16 | 2012-08-16 | 48 |
| 56 | 2.4 | **Pre-release articles** | 2012-08-22 | 2012-08-23 | 37 |
| 57 |  | Create pre-release articles | 2012-08-22 | 2012-08-22 | 50, 54, 51 |
| 58 |  | Publish pre-release articles | 2012-08-23 | 2012-08-23 | 57 |
| 59 |  | Purchase Order for Promo DVDs | 2012-08-16 | 2012-08-16 | 49 |
| 60 | 2.6 | **monitor bug reports** | 2012-08-16 | 2012-08-21 |  |
| 61 |  | flag release critical bugs | 2012-08-16 | 2012-08-16 | 170 |
| 62 |  | remind people to fix critical bugs | 2012-08-17 | 2012-08-17 | 61 |
| 63 |  | Update the most annoying bugs list | 2012-08-21 | 2012-08-21 | 62, 66 |
| 64 | 2.7 | **Checks and tests** | 2012-08-16 | 2012-08-24 |  |
| 65 |  | verify iso sizes fit media | 2012-08-22 | 2012-08-22 | 63 |
| 66 |  | check that all release critical bugs are fixed | 2012-08-20 | 2012-08-20 | 62 |
| 67 |  | check release notes are usable | 2012-08-22 | 2012-08-22 | 54 |
| 68 |  | ensure all packages build | 2012-08-16 | 2012-08-16 |  |
| 69 |  | check manuals contain all changes | 2012-08-16 | 2012-08-16 |  |
| 70 |  | Verify QA testplan is succeeded | 2012-08-16 | 2012-08-16 |  |

| ID | WBS | Task | Duration | Start | Finish | Predecessors |
| --- | --- | --- | --- | --- | --- | --- |
| 71 |  | performance regression tests |  | 2012-08-16 | 2012-08-16 |  |
| 72 |  | check distro upgrade works |  | 2012-08-23 | 2012-08-23 | 65 |
| 73 |  | test live CDs |  | 2012-08-24 | 2012-08-24 | 72, 68, 65 |
| 74 | 2.8 | **Legal** |  | 2012-08-16 | 2012-08-20 |  |
| 75 |  | package list |  | 2012-08-16 | 2012-08-16 |  |
| 76 |  | proprietary components |  | 2012-08-16 | 2012-08-16 |  |
| 77 |  | IPRQ document |  | 2012-08-17 | 2012-08-17 | 76, 75 |
| 78 |  | go from Legal |  | 2012-08-20 | 2012-08-20 | 77 |
| 79 | 2.9 | **Add-On DVD for box vendor** |  | 2012-08-16 | 2012-08-29 |  |
| 80 |  | create package lists |  | 2012-08-16 | 2012-08-16 |  |
| 81 |  | integrate live images for KDE and GNOME |  | 2012-08-27 | 2012-08-27 | 73 |
| 82 |  | add extra content needed by manufacturer |  | 2012-08-16 | 2012-08-16 |  |
| 83 |  | create custom boot menu |  | 2012-08-28 | 2012-08-28 | 81, 82 |
| 84 |  | test the DVD |  | 2012-08-29 | 2012-08-29 | 80, 83 |
| 85 |  | Review upgrade portal page |  | 2012-08-23 | 2012-08-23 | 67 |
| 86 |  | verify delta rpms work |  | 2012-08-16 | 2012-08-16 |  |
| 87 |  | Declare build as GMC |  | 2012-08-30 | 2012-08-30 | 78, 64, 59, 58, 55, 84, 73, 85, 86, 79, 167 |
| 88 | 3 | **Go/no Go meeting** |  | 2012-08-31 | 2012-08-31 | 52 |
| 89 |  | Go decision |  | 2012-08-31 | 2012-08-31 | 87 |
| 90 | 4 | **Release process** |  | 2012-09-04 | 2012-09-26 | 173 |
| 91 |  | Sneak Peeks |  | 2012-09-04 | 2012-09-04 | 172 |
| 92 |  | www.opensuse.org text snippet |  | 2012-09-04 | 2012-09-04 | 47 |
| 93 | 4.3 | **Iso images** |  | 2012-09-04 | 2012-09-05 |  |
| 94 |  | create delta isos |  | 2012-09-04 | 2012-09-04 |  |
| 95 |  | sign the iso images |  | 2012-09-05 | 2012-09-05 | 94 |
| 96 | 4.4 | **Bitorrent** |  | 2012-09-04 | 2012-09-04 |  |
| 97 |  | find external seeders |  | 2012-09-04 | 2012-09-04 |  |
| 98 |  | create torrent meta data |  | 2012-09-04 | 2012-09-04 |  |
| 99 |  | prepare release on internal staging server |  | 2012-09-06 | 2012-09-06 | 98, 95 |
| 100 |  | update mirrors.opensuse.org |  | 2012-09-04 | 2012-09-04 |  |
| 101 | 4.7 | **update the staging area for the mirrors** |  | 2012-09-07 | 2012-09-10 | 100, 99 |
| 102 |  | update meta links |  | 2012-09-07 | 2012-09-07 |  |
| 103 |  | inform mirror admins about upcoming release |  | 2012-09-10 | 2012-09-10 | 102 |
| 104 |  | use mirrorbrain to check for broken mirrors |  | 2012-09-11 | 2012-09-11 | 103, 101 |
| 105 |  | Product highlights page |  | 2012-09-04 | 2012-09-04 | 51 |
| 106 |  | Translate opensuse.org front page |  | 2012-09-04 | 2012-09-04 |  |
| 107 |  | virtual PR package |  | 2012-09-04 | 2012-09-04 |  |
| 108 |  | Videocasts |  | 2012-09-06 | 2012-09-06 | 148 |
| 109 |  | reminder for press and ambassadors |  | 2012-09-04 | 2012-09-04 |  |
| 110 |  | Upload GM image for external print (Fab) |  | 2012-09-04 | 2012-09-04 | 49, 89 |
| 111 |  | Send PR package |  | 2012-09-05 | 2012-09-05 | 110 |
| 112 | 4.16 | **update web sites** |  | 2012-09-04 | 2012-09-14 |  |
| 113 | 4.16.1 | **wiki** |  | 2012-09-04 | 2012-09-14 |  |
| 114 |  | front pages of all languages |  | 2012-09-07 | 2012-09-07 | 115, 108, 106 |
| 115 |  | Move Wiki articles to archive |  | 2012-09-04 | 2012-09-04 |  |
| 116 |  | http://en.opensuse.org/Welcome_to_openSUSE.org |  | 2012-09-10 | 2012-09-10 | 114 |
| 117 |  | http://en.opensuse.org/Development_Version |  | 2012-09-11 | 2012-09-11 | 116 |
| 118 |  | http://en.opensuse.org/Bugs:Most_Annoying_Bugs |  | 2012-09-12 | 2012-09-12 | 117 |
| 119 |  | http://en.opensuse.org/Template:ReleasesTable |  | 2012-09-13 | 2012-09-13 | 118 |
| 120 |  | http://en.opensuse.org/Roadmap |  | 2012-09-14 | 2012-09-14 | 119 |
| 121 |  | http://de.opensuse.org/OpenSUSE_kaufen |  | 2012-09-04 | 2012-09-04 |  |
| 122 |  | forum |  | 2012-09-04 | 2012-09-04 |  |
| 123 |  | www.opensuse.org |  | 2012-09-05 | 2012-09-05 | 92 |
| 124 |  | static.opensuse.org for screenshots |  | 2012-09-04 | 2012-09-04 |  |
| 125 |  | opensuse-community.org |  | 2012-09-04 | 2012-09-04 |  |
| 126 |  | opensuse-education.org |  | 2012-09-04 | 2012-09-04 |  |
| 127 |  | planet.opensuse.org |  | 2012-09-04 | 2012-09-04 |  |
| 128 |  | enable component "Final" in Bugzilla |  | 2012-09-04 | 2012-09-04 |  |
| 129 |  | update doc.opensuse.org |  | 2012-09-04 | 2012-09-04 |  |
| 130 |  | Checkpoint: wiki/webs updated, mirrors ready | 0d | 2012-09-14 | 2012-09-14 | 134, 129, 120, 128 |
| 131 |  | XXX: clarify: download redirector |  | 2012-09-07 | 2012-09-07 | 99 |
| 132 |  | SUSE press release |  | 2012-09-06 | 2012-09-06 | 105, 148 |
| 133 |  | Press interviews |  | 2012-09-07 | 2012-09-07 | 132 |
| 134 |  | Presentation |  | 2012-09-04 | 2012-09-04 | 37 |
| 135 |  | make files readable on internal staging server |  | 2012-09-17 | 2012-09-17 | 150, 104, 130 |
| 136 |  | publish files on pontifex.o.o and rsync.o.o |  | 2012-09-18 | 2012-09-18 | 135 |
| 137 |  | rescan mirrors |  | 2012-09-19 | 2012-09-19 | 136 |
| 138 |  | wait for mirrors to fill up |  | 2012-09-20 | 2012-09-20 | 137 |
| 139 |  | update software.opensuse.org download pages |  | 2012-09-04 | 2012-09-04 |  |
| 140 |  | deploy software.opensuse.org |  | 2012-09-21 | 2012-09-21 | 138, 139 |

| ID | WBS | Task | Start | Finish | Predecessors |
| --- | --- | --- | --- | --- | --- |
| 141 |  | create is_maintained data | 2012-09-04 | 2012-09-04 |  |
| 142 | 4.31 | **make sure 3rd party repos are prepared** | 2012-09-04 | 2012-09-04 |  |
| 143 |  | Nvidia | 2012-09-04 | 2012-09-04 |  |
| 144 |  | ATI | 2012-09-04 | 2012-09-04 |  |
| 145 |  | Packman | 2012-09-04 | 2012-09-04 |  |
| 146 |  | Create Google alerts for openSUSE 12.2 | 2012-09-04 | 2012-09-04 |  |
| 147 | 4.33 | **Release announcement** | 2012-09-05 | 2012-09-24 | 105 |
| 148 |  | Write release announcement | 2012-09-05 | 2012-09-05 | 105, 109, 134, 129 |
| 149 |  | Translate release announcement | 2012-09-06 | 2012-09-06 | 91, 148 |
| 150 |  | check the announcement | 2012-09-07 | 2012-09-07 | 142, 149 |
| 151 |  | Create correct links to webpages and wikies | 2012-09-10 | 2012-09-10 | 139, 133FS+24h, 146, 107, 108, 106, 150 |
| 152 |  | Publish release announcement | 2012-09-24 | 2012-09-24 | 138, 140, 151 |
| 153 | 4.34 | **Release monitoring** | 2012-09-25 | 2012-09-26 | 147 |
| 154 |  | promote launch on social media | 2012-09-25 | 2012-09-25 | 152 |
| 155 |  | repeatedly scan for new mirrors | 2012-09-25 | 2012-09-25 | 152 |
| 156 |  | watch bandwidth usage | 2012-09-26 | 2012-09-26 | 155 |
| 157 |  | Monitoring real time impact | 2012-09-25 | 2012-09-25 | 152 |
| 158 | 5 | **Evaluation** | 2012-09-28 | 2012-10-03 | 174 |
| 159 |  | collect press mentions | 2012-09-28 | 2012-09-28 | 157, 174, 146 |
| 160 |  | Collect stats about release | 2012-09-28 | 2012-09-28 | 174 |
| 161 |  | Create and publish conclusion article | 2012-10-01 | 2012-10-01 | 160, 159 |
| 162 | 5.4 | **Create next product in Bugzilla** | 2012-09-28 | 2012-10-03 |  |
| 163 |  | File Bug report for NPP | 2012-09-28 | 2012-09-28 |  |
| 164 |  | Initialize product data (categories) | 2012-10-01 | 2012-10-01 | 163 |
| 165 |  | request product to be made public | 2012-10-02 | 2012-10-02 | 164 |
| 166 |  | setup milestones | 2012-10-03 | 2012-10-03 | 165 |
| 167 | 6 | **continuous openQA work** | 2012-08-07 | 2012-08-09 |  |
| 168 |  | update openQA testcases | 2012-08-07 | 2012-08-07 |  |
| 169 |  | debug issues found by openQA | 2012-08-08 | 2012-08-08 | 168 |
| 170 |  | file bugs for openQA issues | 2012-08-09 | 2012-08-09 | 169 |
| 171 | 7 | **Release process Roadmap check** | 2012-08-15 | 2012-09-27 |  |
| 172 |  | Define and publish Gold Master roadmap | 2012-08-15 | 2012-08-15 | 1, 36 |
| 173 |  | Define and publish Release schedule | 2012-09-03 | 2012-09-03 | 88 |
| 174 |  | Define Evaluation process roadmap | 2012-09-27 | 2012-09-27 | 157, 156, 154, 90 |

## Version 2 (saved 2012-08-16)

Last finish 2012-10-03 → 2012-09-12 (-21d).

Added:

| ID | Task | Duration | Start | Finish | Predecessors |
| --- | --- | --- | --- | --- | --- |
| 109 | press kit |  | 2012-08-25 | 2012-08-25 | 105 |
| 110 | pre-information for press and ambassadors |  | 2012-08-26 | 2012-08-26 | 109 |
| 113 | Promo DVD production | 10d | 2012-08-25 | 2012-09-03 | 112 |

Changed:

| ID | Task | Start | Finish |
| --- | --- | --- | --- |
| 1 | **Pre-Gold Master development** | 2012-08-07 → 2012-08-04 (-3d) | 2012-08-14 → 2012-08-09 (-5d) |
| 2 | Expected new features document | 2012-08-07 → 2012-08-04 (-3d) | 2012-08-07 → 2012-08-04 (-3d) |
| 3 | create test plan | 2012-08-08 → 2012-08-05 (-3d) | 2012-08-08 → 2012-08-05 (-3d) |
| 4 | **Manuals** | 2012-08-07 → 2012-08-04 (-3d) | 2012-08-13 → 2012-08-08 (-5d) |
| 5 | document new features | 2012-08-07 → 2012-08-04 (-3d) | 2012-08-07 → 2012-08-04 (-3d) |
| 6 | detect obsolete sections in Manuals | 2012-08-07 → 2012-08-04 (-3d) | 2012-08-07 → 2012-08-04 (-3d) |
| 7 | update manuals | 2012-08-08 → 2012-08-05 (-3d) | 2012-08-08 → 2012-08-05 (-3d) |
| 8 | documentation team finished | 2012-08-13 → 2012-08-08 (-5d) | 2012-08-13 → 2012-08-08 (-5d) |
| 9 | **Translations** | 2012-08-07 → 2012-08-04 (-3d) | 2012-08-10 → 2012-08-07 (-3d) |
| 10 | manuals | 2012-08-09 → 2012-08-06 (-3d) | 2012-08-09 → 2012-08-06 (-3d) |
| 11 | package descriptions | 2012-08-07 → 2012-08-04 (-3d) | 2012-08-07 → 2012-08-04 (-3d) |
| 12 | package strings | 2012-08-07 → 2012-08-04 (-3d) | 2012-08-07 → 2012-08-04 (-3d) |
| 13 | release notes | 2012-08-07 → 2012-08-04 (-3d) | 2012-08-07 → 2012-08-04 (-3d) |
| 14 | translation check finished | 2012-08-10 → 2012-08-07 (-3d) | 2012-08-10 → 2012-08-07 (-3d) |
| 15 | **Security** | 2012-08-07 → 2012-08-04 (-3d) | 2012-08-08 → 2012-08-05 (-3d) |
| 16 | review new setuid binaries | 2012-08-07 → 2012-08-04 (-3d) | 2012-08-07 → 2012-08-04 (-3d) |
| 17 | review new network services | 2012-08-07 → 2012-08-04 (-3d) | 2012-08-07 → 2012-08-04 (-3d) |
| 18 | review new dbus services | 2012-08-07 → 2012-08-04 (-3d) | 2012-08-07 → 2012-08-04 (-3d) |
| 19 | review new policykit policies | 2012-08-07 → 2012-08-04 (-3d) | 2012-08-07 → 2012-08-04 (-3d) |
| 20 | update Apparmor profiles | 2012-08-07 → 2012-08-04 (-3d) | 2012-08-07 → 2012-08-04 (-3d) |
| 21 | security check finished | 2012-08-08 → 2012-08-05 (-3d) | 2012-08-08 → 2012-08-05 (-3d) |
| 22 | **prepare stable branch** | 2012-08-07 → 2012-08-04 (-3d) | 2012-08-09 → 2012-08-06 (-3d) |
| 23 | branch new distro in OBS | 2012-08-07 → 2012-08-04 (-3d) | 2012-08-07 → 2012-08-04 (-3d) |
| 24 | bump release numbers in Factory | 2012-08-08 → 2012-08-05 (-3d) | 2012-08-08 → 2012-08-05 (-3d) |
| 25 | Remove "Beta" tags from packages and configs | 2012-08-08 → 2012-08-05 (-3d) | 2012-08-08 → 2012-08-05 (-3d) |
| 26 | set up Update project | 2012-08-08 → 2012-08-05 (-3d) | 2012-08-08 → 2012-08-05 (-3d) |
| 27 | notify maintenance & security about new branch | 2012-08-09 → 2012-08-06 (-3d) | 2012-08-09 → 2012-08-06 (-3d) |
| 28 | **Bug fixing** | 2012-08-07 → 2012-08-04 (-3d) | 2012-08-10 → 2012-08-07 (-3d) |
| 29 | fix bug | 2012-08-07 → 2012-08-04 (-3d) | 2012-08-07 → 2012-08-04 (-3d) |
| 30 | submit package | 2012-08-08 → 2012-08-05 (-3d) | 2012-08-08 → 2012-08-05 (-3d) |
| 31 | review package | 2012-08-09 → 2012-08-06 (-3d) | 2012-08-09 → 2012-08-06 (-3d) |
| 32 | check in to distribution | 2012-08-10 → 2012-08-07 (-3d) | 2012-08-10 → 2012-08-07 (-3d) |
| 33 | update most annoying bugs list | 2012-08-07 → 2012-08-04 (-3d) | 2012-08-07 → 2012-08-04 (-3d) |
| 34 | update rsync modules used by the mirrors | 2012-08-07 → 2012-08-04 (-3d) | 2012-08-07 → 2012-08-04 (-3d) |
| 35 | Go from Legal team | 2012-08-07 → 2012-08-04 (-3d) | 2012-08-07 → 2012-08-04 (-3d) |
| 36 | Go/Nogo for declaring RC? | 2012-08-14 → 2012-08-09 (-5d) | 2012-08-14 → 2012-08-09 (-5d) |
| 37 | **Artwork** | 2012-08-07 → 2012-08-04 (-3d) | 2012-08-09 → 2012-08-06 (-3d) |
| 38 | run competition for best artwork | 2012-08-07 → 2012-08-04 (-3d) | 2012-08-07 → 2012-08-04 (-3d) |
| 39 | Basic design | 2012-08-08 → 2012-08-05 (-3d) | 2012-08-08 → 2012-08-05 (-3d) |
| 40 | bootsplash | 2012-08-09 → 2012-08-06 (-3d) | 2012-08-09 → 2012-08-06 (-3d) |
| 41 | desktop splash screens | 2012-08-09 → 2012-08-06 (-3d) | 2012-08-09 → 2012-08-06 (-3d) |
| 42 | wallpapers | 2012-08-09 → 2012-08-06 (-3d) | 2012-08-09 → 2012-08-06 (-3d) |
| 43 | Poster | 2012-08-09 → 2012-08-06 (-3d) | 2012-08-09 → 2012-08-06 (-3d) |
| 44 | Sticker | 2012-08-09 → 2012-08-06 (-3d) | 2012-08-09 → 2012-08-06 (-3d) |
| 45 | Flyers | 2012-08-09 → 2012-08-06 (-3d) | 2012-08-09 → 2012-08-06 (-3d) |
| 46 | T-Shirts | 2012-08-09 → 2012-08-06 (-3d) | 2012-08-09 → 2012-08-06 (-3d) |
| 47 | download banner | 2012-08-09 → 2012-08-06 (-3d) | 2012-08-09 → 2012-08-06 (-3d) |
| 48 | Countdown | 2012-08-09 → 2012-08-06 (-3d) | 2012-08-09 → 2012-08-06 (-3d) |
| 49 | Promo DVD Sleeve | 2012-08-09 → 2012-08-06 (-3d) | 2012-08-09 → 2012-08-06 (-3d) |
| 50 | Presentation | 2012-08-09 → 2012-08-06 (-3d) | 2012-08-09 → 2012-08-06 (-3d) |
| 51 | Screenshots | 2012-08-07 → 2012-08-04 (-3d) | 2012-08-07 → 2012-08-04 (-3d) |
| 52 | **Gold Master development** | 2012-08-16 → 2012-08-11 (-5d) | 2012-08-30 → 2012-08-21 (-9d) |
| 53 | Call for Release Parties | 2012-08-16 → 2012-08-11 (-5d) | 2012-08-16 → 2012-08-11 (-5d) |
| 54 | Update Release notes | 2012-08-21 → 2012-08-14 (-7d) | 2012-08-21 → 2012-08-14 (-7d) |
| 55 | Install Countdown link | 2012-08-16 → 2012-08-11 (-5d) | 2012-08-16 → 2012-08-11 (-5d) |
| 56 | **Pre-release articles** | 2012-08-22 → 2012-08-15 (-7d) | 2012-08-23 → 2012-08-16 (-7d) |
| 57 | Create pre-release articles | 2012-08-22 → 2012-08-15 (-7d) | 2012-08-22 → 2012-08-15 (-7d) |
| 58 | Publish pre-release articles | 2012-08-23 → 2012-08-16 (-7d) | 2012-08-23 → 2012-08-16 (-7d) |
| 59 | Purchase Order for Promo DVDs | 2012-08-16 → 2012-08-11 (-5d) | 2012-08-16 → 2012-08-11 (-5d) |
| 60 | **monitor bug reports** | 2012-08-16 → 2012-08-11 (-5d) | 2012-08-21 → 2012-08-14 (-7d) |
| 61 | flag release critical bugs | 2012-08-16 → 2012-08-11 (-5d) | 2012-08-16 → 2012-08-11 (-5d) |
| 62 | remind people to fix critical bugs | 2012-08-17 → 2012-08-12 (-5d) | 2012-08-17 → 2012-08-12 (-5d) |
| 63 | Update the most annoying bugs list | 2012-08-21 → 2012-08-14 (-7d) | 2012-08-21 → 2012-08-14 (-7d) |
| 64 | **Checks and tests** | 2012-08-16 → 2012-08-11 (-5d) | 2012-08-24 → 2012-08-17 (-7d) |
| 65 | verify iso sizes fit media | 2012-08-22 → 2012-08-15 (-7d) | 2012-08-22 → 2012-08-15 (-7d) |
| 66 | check that all release critical bugs are fixed | 2012-08-20 → 2012-08-13 (-7d) | 2012-08-20 → 2012-08-13 (-7d) |
| 67 | check release notes are usable | 2012-08-22 → 2012-08-15 (-7d) | 2012-08-22 → 2012-08-15 (-7d) |
| 68 | ensure all packages build | 2012-08-16 → 2012-08-11 (-5d) | 2012-08-16 → 2012-08-11 (-5d) |
| 69 | check manuals contain all changes | 2012-08-16 → 2012-08-11 (-5d) | 2012-08-16 → 2012-08-11 (-5d) |
| 70 | Verify QA testplan is succeeded | 2012-08-16 → 2012-08-11 (-5d) | 2012-08-16 → 2012-08-11 (-5d) |

| ID | Task | Start | Finish | Complete | Predecessors |
| --- | --- | --- | --- | --- | --- |
| 71 | performance regression tests | 2012-08-16 → 2012-08-11 (-5d) | 2012-08-16 → 2012-08-11 (-5d) |  |  |
| 72 | check distro upgrade works | 2012-08-23 → 2012-08-16 (-7d) | 2012-08-23 → 2012-08-16 (-7d) |  |  |
| 73 | test live CDs | 2012-08-24 → 2012-08-17 (-7d) | 2012-08-24 → 2012-08-17 (-7d) |  |  |
| 74 | **Legal** | 2012-08-16 → 2012-08-11 (-5d) | 2012-08-20 → 2012-08-13 (-7d) |  |  |
| 75 | package list | 2012-08-16 → 2012-08-11 (-5d) | 2012-08-16 → 2012-08-11 (-5d) |  |  |
| 76 | proprietary components | 2012-08-16 → 2012-08-11 (-5d) | 2012-08-16 → 2012-08-11 (-5d) |  |  |
| 77 | IPRQ document | 2012-08-17 → 2012-08-12 (-5d) | 2012-08-17 → 2012-08-12 (-5d) |  |  |
| 78 | go from Legal | 2012-08-20 → 2012-08-13 (-7d) | 2012-08-20 → 2012-08-13 (-7d) |  |  |
| 79 | **Add-On DVD for box vendor** | 2012-08-16 → 2012-08-11 (-5d) | 2012-08-29 → 2012-08-20 (-9d) |  |  |
| 80 | create package lists | 2012-08-16 → 2012-08-11 (-5d) | 2012-08-16 → 2012-08-11 (-5d) |  |  |
| 81 | integrate live images for KDE and GNOME | 2012-08-27 → 2012-08-18 (-9d) | 2012-08-27 → 2012-08-18 (-9d) |  |  |
| 82 | add extra content needed by manufacturer | 2012-08-16 → 2012-08-11 (-5d) | 2012-08-16 → 2012-08-11 (-5d) |  |  |
| 83 | create custom boot menu | 2012-08-28 → 2012-08-19 (-9d) | 2012-08-28 → 2012-08-19 (-9d) |  |  |
| 84 | test the DVD | 2012-08-29 → 2012-08-20 (-9d) | 2012-08-29 → 2012-08-20 (-9d) |  |  |
| 85 | Review upgrade portal page | 2012-08-23 → 2012-08-16 (-7d) | 2012-08-23 → 2012-08-16 (-7d) |  |  |
| 86 | verify delta rpms work | 2012-08-16 → 2012-08-11 (-5d) | 2012-08-16 → 2012-08-11 (-5d) |  |  |
| 87 | Declare build as GMC | 2012-08-30 → 2012-08-21 (-9d) | 2012-08-30 → 2012-08-21 (-9d) |  |  |
| 88 | **Go/no Go meeting** | 2012-08-31 → 2012-08-22 (-9d) | 2012-08-31 → 2012-08-22 (-9d) |  |  |
| 89 | Go decision | 2012-08-31 → 2012-08-22 (-9d) | 2012-08-31 → 2012-08-22 (-9d) |  |  |
| 90 | **Release process** | 2012-09-04 → 2012-08-24 (-11d) | 2012-09-26 → 2012-09-07 (-19d) |  |  |
| 91 | Sneak Peeks | 2012-09-04 → 2012-08-24 (-11d) | 2012-09-04 → 2012-08-24 (-11d) |  |  |
| 92 | www.opensuse.org text snippet | 2012-09-04 → 2012-08-24 (-11d) | 2012-09-04 → 2012-08-24 (-11d) |  |  |
| 93 | **Iso images** | 2012-09-04 → 2012-08-24 (-11d) | 2012-09-05 → 2012-08-25 (-11d) |  |  |
| 94 | create delta isos | 2012-09-04 → 2012-08-24 (-11d) | 2012-09-04 → 2012-08-24 (-11d) |  |  |
| 95 | sign the iso images | 2012-09-05 → 2012-08-25 (-11d) | 2012-09-05 → 2012-08-25 (-11d) |  |  |
| 96 | **Bitorrent** | 2012-09-04 → 2012-08-24 (-11d) | 2012-09-04 → 2012-08-24 (-11d) |  |  |
| 97 | find external seeders | 2012-09-04 → 2012-08-24 (-11d) | 2012-09-04 → 2012-08-24 (-11d) |  |  |
| 98 | create torrent meta data | 2012-09-04 → 2012-08-24 (-11d) | 2012-09-04 → 2012-08-24 (-11d) |  |  |
| 99 | prepare release on internal staging server | 2012-09-06 → 2012-08-26 (-11d) | 2012-09-06 → 2012-08-26 (-11d) |  |  |
| 100 | update mirrors.opensuse.org | 2012-09-04 → 2012-08-24 (-11d) | 2012-09-04 → 2012-08-24 (-11d) |  |  |
| 101 | **update the staging area for the mirrors** | 2012-09-07 → 2012-08-27 (-11d) | 2012-09-10 → 2012-08-28 (-13d) |  |  |
| 102 | update meta links | 2012-09-07 → 2012-08-27 (-11d) | 2012-09-07 → 2012-08-27 (-11d) | 0% → 25% |  |
| 103 | inform mirror admins about upcoming release | 2012-09-10 → 2012-08-28 (-13d) | 2012-09-10 → 2012-08-28 (-13d) |  |  |
| 104 | use mirrorbrain to check for broken mirrors | 2012-09-11 → 2012-08-29 (-13d) | 2012-09-11 → 2012-08-29 (-13d) |  |  |
| 105 | Product highlights page | 2012-09-04 → 2012-08-24 (-11d) | 2012-09-04 → 2012-08-24 (-11d) |  |  |
| 106 | Translate opensuse.org front page | 2012-09-04 → 2012-08-24 (-11d) | 2012-09-04 → 2012-08-24 (-11d) |  |  |
| 107 | virtual PR package | 2012-09-04 → 2012-08-24 (-11d) | 2012-09-04 → 2012-08-24 (-11d) |  |  |
| 108 | Videocasts | 2012-09-06 → 2012-08-24 (-13d) | 2012-09-06 → 2012-08-24 (-13d) |  | 151 → none |
| 111 | reminder for press and ambassadors | 2012-09-04 → 2012-08-27 (-8d) | 2012-09-04 → 2012-08-27 (-8d) |  | none → 110 |
| 112 | Upload GM image for external print (Fab) | 2012-09-04 → 2012-08-24 (-11d) | 2012-09-04 → 2012-08-24 (-11d) |  |  |
| 114 | Send PR package | 2012-09-05 → 2012-09-04 (-1d) | 2012-09-05 → 2012-09-04 (-1d) |  | 112 → 45, 44, 43, 113 |
| 115 | **update web sites** | 2012-09-04 → 2012-08-24 (-11d) | 2012-09-14 → 2012-08-30 (-15d) |  |  |
| 116 | **wiki** | 2012-09-04 → 2012-08-24 (-11d) | 2012-09-14 → 2012-08-30 (-15d) |  |  |
| 117 | front pages of all languages | 2012-09-07 → 2012-08-25 (-13d) | 2012-09-07 → 2012-08-25 (-13d) |  |  |
| 118 | Move Wiki articles to archive | 2012-09-04 → 2012-08-24 (-11d) | 2012-09-04 → 2012-08-24 (-11d) |  |  |
| 119 | http://en.opensuse.org/Welcome_to_openSUSE.org | 2012-09-10 → 2012-08-26 (-15d) | 2012-09-10 → 2012-08-26 (-15d) |  |  |
| 120 | http://en.opensuse.org/Development_Version | 2012-09-11 → 2012-08-27 (-15d) | 2012-09-11 → 2012-08-27 (-15d) |  |  |
| 121 | http://en.opensuse.org/Bugs:Most_Annoying_Bugs | 2012-09-12 → 2012-08-28 (-15d) | 2012-09-12 → 2012-08-28 (-15d) |  |  |
| 122 | http://en.opensuse.org/Template:ReleasesTable | 2012-09-13 → 2012-08-29 (-15d) | 2012-09-13 → 2012-08-29 (-15d) |  |  |
| 123 | http://en.opensuse.org/Roadmap | 2012-09-14 → 2012-08-30 (-15d) | 2012-09-14 → 2012-08-30 (-15d) |  |  |
| 124 | http://de.opensuse.org/OpenSUSE_kaufen | 2012-09-04 → 2012-08-24 (-11d) | 2012-09-04 → 2012-08-24 (-11d) |  |  |
| 125 | forum | 2012-09-04 → 2012-08-24 (-11d) | 2012-09-04 → 2012-08-24 (-11d) |  |  |
| 126 | www.opensuse.org | 2012-09-05 → 2012-08-25 (-11d) | 2012-09-05 → 2012-08-25 (-11d) |  |  |
| 127 | static.opensuse.org for screenshots | 2012-09-04 → 2012-08-24 (-11d) | 2012-09-04 → 2012-08-24 (-11d) |  |  |
| 128 | opensuse-community.org | 2012-09-04 → 2012-08-24 (-11d) | 2012-09-04 → 2012-08-24 (-11d) |  |  |
| 129 | opensuse-education.org | 2012-09-04 → 2012-08-24 (-11d) | 2012-09-04 → 2012-08-24 (-11d) |  |  |
| 130 | planet.opensuse.org | 2012-09-04 → 2012-08-24 (-11d) | 2012-09-04 → 2012-08-24 (-11d) |  |  |
| 131 | enable component "Final" in Bugzilla | 2012-09-04 → 2012-08-24 (-11d) | 2012-09-04 → 2012-08-24 (-11d) |  |  |
| 132 | update doc.opensuse.org | 2012-09-04 → 2012-08-24 (-11d) | 2012-09-04 → 2012-08-24 (-11d) |  |  |
| 133 | Checkpoint: wiki/webs updated, mirrors ready | 2012-09-14 → 2012-08-30 (-15d) | 2012-09-14 → 2012-08-30 (-15d) |  |  |
| 134 | XXX: clarify: download redirector | 2012-09-07 → 2012-08-27 (-11d) | 2012-09-07 → 2012-08-27 (-11d) |  |  |
| 135 | SUSE press release | 2012-09-06 → 2012-08-28 (-9d) | 2012-09-06 → 2012-08-28 (-9d) |  |  |
| 136 | Press interviews | 2012-09-07 → 2012-08-29 (-9d) | 2012-09-07 → 2012-08-29 (-9d) |  |  |
| 137 | Presentation | 2012-09-04 → 2012-08-24 (-11d) | 2012-09-04 → 2012-08-24 (-11d) |  |  |
| 138 | make files readable on internal staging server | 2012-09-17 → 2012-08-31 (-17d) | 2012-09-17 → 2012-08-31 (-17d) |  |  |
| 139 | publish files on pontifex.o.o and rsync.o.o | 2012-09-18 → 2012-09-01 (-17d) | 2012-09-18 → 2012-09-01 (-17d) |  |  |
| 140 | rescan mirrors | 2012-09-19 → 2012-09-02 (-17d) | 2012-09-19 → 2012-09-02 (-17d) |  |  |
| 141 | wait for mirrors to fill up | 2012-09-20 → 2012-09-03 (-17d) | 2012-09-20 → 2012-09-03 (-17d) |  |  |
| 142 | update software.opensuse.org download pages | 2012-09-04 → 2012-08-24 (-11d) | 2012-09-04 → 2012-08-24 (-11d) |  |  |
| 143 | deploy software.opensuse.org | 2012-09-21 → 2012-09-04 (-17d) | 2012-09-21 → 2012-09-04 (-17d) |  |  |

| ID | Task | Start | Finish | Predecessors |
| --- | --- | --- | --- | --- |
| 144 | create is_maintained data | 2012-09-04 → 2012-08-24 (-11d) | 2012-09-04 → 2012-08-24 (-11d) |  |
| 145 | **make sure 3rd party repos are prepared** | 2012-09-04 → 2012-08-24 (-11d) | 2012-09-04 → 2012-08-24 (-11d) |  |
| 146 | Nvidia | 2012-09-04 → 2012-08-24 (-11d) | 2012-09-04 → 2012-08-24 (-11d) |  |
| 147 | ATI | 2012-09-04 → 2012-08-24 (-11d) | 2012-09-04 → 2012-08-24 (-11d) |  |
| 148 | Packman | 2012-09-04 → 2012-08-24 (-11d) | 2012-09-04 → 2012-08-24 (-11d) |  |
| 149 | Create Google alerts for openSUSE 12.2 | 2012-09-04 → 2012-08-24 (-11d) | 2012-09-04 → 2012-08-24 (-11d) |  |
| 150 | **Release announcement** | 2012-09-05 → 2012-08-27 (-9d) | 2012-09-24 → 2012-09-05 (-19d) |  |
| 151 | Write release announcement | 2012-09-05 → 2012-08-27 (-9d) | 2012-09-05 → 2012-08-27 (-9d) | 105, 111, 137, 132 → 110, 105, 137, 132 |
| 152 | Translate release announcement | 2012-09-06 → 2012-08-28 (-9d) | 2012-09-06 → 2012-08-28 (-9d) |  |
| 153 | check the announcement | 2012-09-07 → 2012-08-29 (-9d) | 2012-09-07 → 2012-08-29 (-9d) |  |
| 154 | Create correct links to webpages and wikies | 2012-09-10 → 2012-08-31 (-10d) | 2012-09-10 → 2012-08-31 (-10d) |  |
| 155 | Publish release announcement | 2012-09-24 → 2012-09-05 (-19d) | 2012-09-24 → 2012-09-05 (-19d) |  |
| 156 | **Release monitoring** | 2012-09-25 → 2012-09-06 (-19d) | 2012-09-26 → 2012-09-07 (-19d) |  |
| 157 | promote launch on social media | 2012-09-25 → 2012-09-06 (-19d) | 2012-09-25 → 2012-09-06 (-19d) |  |
| 158 | repeatedly scan for new mirrors | 2012-09-25 → 2012-09-06 (-19d) | 2012-09-25 → 2012-09-06 (-19d) |  |
| 159 | watch bandwidth usage | 2012-09-26 → 2012-09-07 (-19d) | 2012-09-26 → 2012-09-07 (-19d) |  |
| 160 | Monitoring real time impact | 2012-09-25 → 2012-09-06 (-19d) | 2012-09-25 → 2012-09-06 (-19d) |  |
| 161 | **Evaluation** | 2012-09-28 → 2012-09-09 (-19d) | 2012-10-03 → 2012-09-12 (-21d) |  |
| 162 | collect press mentions | 2012-09-28 → 2012-09-09 (-19d) | 2012-09-28 → 2012-09-09 (-19d) |  |
| 163 | Collect stats about release | 2012-09-28 → 2012-09-09 (-19d) | 2012-09-28 → 2012-09-09 (-19d) |  |
| 164 | Create and publish conclusion article | 2012-10-01 → 2012-09-10 (-21d) | 2012-10-01 → 2012-09-10 (-21d) |  |
| 165 | **Create next product in Bugzilla** | 2012-09-28 → 2012-09-09 (-19d) | 2012-10-03 → 2012-09-12 (-21d) |  |
| 166 | File Bug report for NPP | 2012-09-28 → 2012-09-09 (-19d) | 2012-09-28 → 2012-09-09 (-19d) |  |
| 167 | Initialize product data (categories) | 2012-10-01 → 2012-09-10 (-21d) | 2012-10-01 → 2012-09-10 (-21d) |  |
| 168 | request product to be made public | 2012-10-02 → 2012-09-11 (-21d) | 2012-10-02 → 2012-09-11 (-21d) |  |
| 169 | setup milestones | 2012-10-03 → 2012-09-12 (-21d) | 2012-10-03 → 2012-09-12 (-21d) |  |
| 170 | **continuous openQA work** | 2012-08-07 → 2012-08-04 (-3d) | 2012-08-09 → 2012-08-06 (-3d) |  |
| 171 | update openQA testcases | 2012-08-07 → 2012-08-04 (-3d) | 2012-08-07 → 2012-08-04 (-3d) |  |
| 172 | debug issues found by openQA | 2012-08-08 → 2012-08-05 (-3d) | 2012-08-08 → 2012-08-05 (-3d) |  |
| 173 | file bugs for openQA issues | 2012-08-09 → 2012-08-06 (-3d) | 2012-08-09 → 2012-08-06 (-3d) |  |
| 174 | **Release process Roadmap check** | 2012-08-15 → 2012-08-10 (-5d) | 2012-09-27 → 2012-09-08 (-19d) |  |
| 175 | Define and publish Gold Master roadmap | 2012-08-15 → 2012-08-10 (-5d) | 2012-08-15 → 2012-08-10 (-5d) |  |
| 176 | Define and publish Release schedule | 2012-09-03 → 2012-08-23 (-11d) | 2012-09-03 → 2012-08-23 (-11d) |  |
| 177 | Define Evaluation process roadmap | 2012-09-27 → 2012-09-08 (-19d) | 2012-09-27 → 2012-09-08 (-19d) |  |

## Version 3 (saved 2012-09-03)

Last finish stays 2012-09-12.

Added:

| ID | Task | Start | Finish | Predecessors |
| --- | --- | --- | --- | --- |
| 24 | enable ARCHIVES.gz and suse repo data | 2012-08-04 | 2012-08-04 |  |
| 92 | Upload GM to internal server (dist) | 2012-08-24 | 2012-08-24 |  |
| 93 | Announce GM internally | 2012-08-24 | 2012-08-24 |  |
| 115 | make GM available to forum staff | 2012-08-24 | 2012-08-24 |  |
| 116 | provide Promo DVD images to Fab | 2012-08-24 | 2012-08-24 | 50, 90 |
| 135 | shop.opensuse.org | 2012-08-24 | 2012-08-24 |  |
| 138 | https://www.suse.com/documentation | 2012-08-25 | 2012-08-25 | 137 |

Removed: 112 Upload GM image for external print (Fab)

Changed:

| ID | Task | Predecessors |
| --- | --- | --- |
| 117 | Promo DVD production | Upload GM image for external print (Fab) → 116 |
| 139 | Checkpoint: wiki/webs updated, mirrors ready | 143, 137, 127, 136 → 138, 143, 137, 127, 136 |

## Version 4 (saved 2012-09-04)

Last finish 2012-09-12 → 2012-09-13 (+1d).

Added:

| ID | Task | Start | Finish | Predecessors |
| --- | --- | --- | --- | --- |
| 146 | change openSUSE-current | 2012-09-02 | 2012-09-02 | 145 |
| 151 | test software.opensuse.org | 2012-09-05 | 2012-09-05 | 150 |
| 163 | **Publish release announcement** | 2012-09-06 | 2012-09-06 | 151, 148, 162 |
| 164 | news.opensuse.org | 2012-09-06 | 2012-09-06 |  |
| 165 | opensuse-project@opensuse.org | 2012-09-06 | 2012-09-06 |  |
| 166 | publish SUSE press release | 2012-09-06 | 2012-09-06 | 141 |

Removed: 161 Publish release announcement

Changed:

| ID | Task | Finish | Predecessors | Other |
| --- | --- | --- | --- | --- |
| 91 | **Release process** | 2012-09-07 → 2012-09-08 (+1d) |  |  |
| 144 | make files readable on staging server |  |  | was named make files readable on internal staging server |
| 145 | make all files visible on download.o.o |  |  | was named publish files on pontifex.o.o and rsync.o.o |
| 158 | **Release announcement** | 2012-09-05 → 2012-09-06 (+1d) |  |  |
| 167 | **Release monitoring** | 2012-09-07 → 2012-09-08 (+1d) |  |  |
| 168 | promote launch on social media | 2012-09-06 → 2012-09-07 (+1d) | Publish release announcement → 163 |  |
| 169 | repeatedly scan for new mirrors | 2012-09-06 → 2012-09-07 (+1d) | Publish release announcement → 163 |  |
| 170 | watch bandwidth usage | 2012-09-07 → 2012-09-08 (+1d) |  |  |
| 171 | Monitoring real time impact | 2012-09-06 → 2012-09-07 (+1d) | Publish release announcement → 163 |  |
| 172 | **Evaluation** | 2012-09-12 → 2012-09-13 (+1d) |  |  |
| 173 | collect press mentions | 2012-09-09 → 2012-09-10 (+1d) |  |  |
| 174 | Collect stats about release | 2012-09-09 → 2012-09-10 (+1d) |  |  |
| 175 | Create and publish conclusion article | 2012-09-10 → 2012-09-11 (+1d) |  |  |
| 176 | **Create next product in Bugzilla** | 2012-09-12 → 2012-09-13 (+1d) |  |  |
| 177 | File Bug report for NPP | 2012-09-09 → 2012-09-10 (+1d) |  |  |
| 178 | Initialize product data (categories) | 2012-09-10 → 2012-09-11 (+1d) |  |  |
| 179 | request product to be made public | 2012-09-11 → 2012-09-12 (+1d) |  |  |
| 180 | setup milestones | 2012-09-12 → 2012-09-13 (+1d) |  |  |
| 185 | **Release process Roadmap check** | 2012-09-08 → 2012-09-09 (+1d) |  |  |
| 188 | Define Evaluation process roadmap | 2012-09-08 → 2012-09-09 (+1d) |  |  |

## Version 5 (saved 2012-09-05)

Last finish stays 2012-09-13.

Added:

| ID | Task | Start | Finish | Predecessors |
| --- | --- | --- | --- | --- |
| 157 | update community repo link | 2012-08-25 | 2012-08-25 | 154, 155, 156 |

Changed:

| ID | Task | Finish |
| --- | --- | --- |
| 153 | **make sure 3rd party repos are prepared** | 2012-08-24 → 2012-08-25 (+1d) |

## Version 6 (saved 2012-09-06)

Last finish stays 2012-09-13.

Added:

| ID | Task | Start | Finish |
| --- | --- | --- | --- |
| 168 | update freecode entry | 2012-08-25 | 2012-08-25 |

Changed:

| ID | Task | Start | Other |
| --- | --- | --- | --- |
| 159 | **Release announcement** | 2012-08-27 → 2012-08-25 (-2d) |  |
| 166 | opensuse-announce@opensuse.org |  | was named opensuse-project@opensuse.org |

## Version 7 (saved 2012-09-11)

Last finish stays 2012-09-13.

Added:

| ID | Task | Start | Finish |
| --- | --- | --- | --- |
| 3 | test patterns | 2012-08-04 | 2012-08-04 |
| 56 | collect stats for RC | 2012-08-11 | 2012-08-11 |

## Version 8 (saved 2012-09-13)

Last finish stays 2012-09-13.

Added:

| ID | Task | Start | Finish | Predecessors |
| --- | --- | --- | --- | --- |
| 53 | Create screenshot guidelines | 2012-08-04 | 2012-08-04 |  |
| 122 | Tell ambassadors that they can order promo dvds | 2012-09-04 | 2012-09-04 | 120 |
| 154 | update software.opensuse.org search bar | 2012-08-24 | 2012-08-24 |  |

Changed:

| ID | Task | Start | Finish | Predecessors |
| --- | --- | --- | --- | --- |
| 54 | Screenshots | 2012-08-04 → 2012-08-05 (+1d) | 2012-08-04 → 2012-08-05 (+1d) | none → 53 |
| 155 | deploy software.opensuse.org |  |  | 152, 153 → 154, 152, 153 |

## Version 9 (saved 2012-09-21)

Last finish stays 2012-09-13.

Added:

| ID | Task | Start | Finish |
| --- | --- | --- | --- |
| 96 | create repo-md meta data | 2012-08-24 | 2012-08-24 |

## Version 10 (saved 2012-11-09)

Note of the change: remove some transitive deps for taskjuggler conversion

Last finish stays 2012-09-13.

Changed:

| ID | Task | Predecessors |
| --- | --- | --- |
| 56 | Call for Release Parties | 194 → none |
| 166 | Write release announcement | 117, 112, 148, 142 → 117, 148, 142 |
| 181 | collect press mentions | 179, 196, 164 → 179, 164 |
| 182 | Collect stats about release | 196 → none |
